# Проводная система

How a schedule from a web Gantt chart changed from version to version. A marks actual dates.

## Version 1 (saved 2024-03-17)

| ID | WBS | Task | Duration | Start | Finish | Predecessors |
| --- | --- | --- | --- | --- | --- | --- |
| 2 | 1 | **Минимальный набор (MCP, SD, MD, SCI, CP)** | 209d | 2024-03-01 | 2024-12-18 |  |
| 3 |  | Испытания по EN54 в РФ (климатика, эмс, вибро, коррозия) | 43d | 2024-03-01 | 2024-04-30 |  |
| 4 |  | Анализ результатов испытаний в РФ | 1d | 2024-05-01 | 2024-05-01 | 3 |
| 5 |  | Внесение доработок | 15d | 2024-05-02 | 2024-05-22 | 4 |
| 6 |  | Заказ образцов для повторных тестов | 10d | 2024-05-23 | 2024-06-05 | 5 |
| 7 |  | Повторные испытания в РФ | 15d | 2024-06-06 | 2024-06-26 | 6 |
| 8 |  | Заказ и сборка партии к отправки в ОАЭ | 30d | 2024-06-27 | 2024-08-07 | 7 |
| 9 |  | Логистика МСК-ОАЭ-Польша | 15d | 2024-08-08 | 2024-08-28 | 8 |
| 10 |  | Сертификация | 80d | 2024-08-29 | 2024-12-18 | 9 |
| 11 |  | Заказ и сборка партии к отправке в ОАЭ | 10d | 2024-05-02 | 2024-05-15 | 4 |
| 12 |  | Логистика МСК-ОАЭ-Польша | 15d | 2024-05-16 | 2024-06-05 | 11 |
| 13 |  | Сертификация | 80d | 2024-06-06 | 2024-09-25 | 12 |

## Version 2 (saved 2024-03-17)

Last finish 2024-12-18 → 2025-04-09 (+112d).

Added:

| ID | Task | Duration | Start | Finish | Predecessors |
| --- | --- | --- | --- | --- | --- |
| 14 | **Остальные устройства** | 289d | 2024-03-01 | 2025-04-09 |  |
| 15 | Испытания по EN54 в РФ (климатика, эмс, вибро, коррозия) | 43d | 2024-03-01 | 2024-04-30 |  |
| 16 | Анализ результатов испытаний в РФ | 1d | 2024-05-01 | 2024-05-01 | 15 |
| 17 | Внесение доработок | 15d | 2024-05-02 | 2024-05-22 | 16 |
| 18 | Заказ образцов для повторных тестов | 10d | 2024-05-23 | 2024-06-05 | 17 |
| 19 | Повторные испытания в РФ | 15d | 2024-06-06 | 2024-06-26 | 18 |
| 20 | Заказ и сборка партии к отправки в ОАЭ | 30d | 2024-06-27 | 2024-08-07 | 19 |
| 21 | Логистика МСК-ОАЭ-Польша | 15d | 2024-08-08 | 2024-08-28 | 20 |
| 22 | Сертификация | 80d | 2024-12-19 | 2025-04-09 | 21, 10 |
| 23 | Заказ и сборка партии к отправке в ОАЭ | 10d | 2024-05-02 | 2024-05-15 | 16 |
| 24 | Логистика МСК-ОАЭ-Польша | 15d | 2024-05-16 | 2024-06-05 | 23 |
| 25 | Сертификация | 80d | 2024-09-26 | 2025-01-15 | 24, 13 |
